# StyleMate

Schedule from MS Project XML, 2026-10-02 to 2026-11-04.
Planificacion del proyecto StyleMate
Facultad de Ingeniería y Arquitectura - Cusco, Perú
Proyecto StyleMate completo

## Calendars

- Standard: Mon-Fri 08:00-12:00, 13:00-17:00; Sat-Sun off.

## Resources

| Resource | Notes |
| --- | --- |
| Huamantalla Ríos, Diego Miguel | Rol: Developer — Datos y Preprocesamiento / Carga total: 24 dias laborables |
| Latorre Campos, Andre Ismael | Rol: Developer — Modelos CNN / Carga total: 24 dias laborables |
| Ordoñez Paniura, Marcela Leonor | Rol: Developer — Reglas, Gusto y MLP / Carga total: 24 dias laborables |
| Suel Monrroy David Joshua | Rol: Scrum Master / Carga total: 24 dias laborables |

## Schedule

| ID | WBS | Task | Type | Duration | Start | Finish | Resources | Work |
| --- | --- | --- | --- | --- | --- | --- | --- | --- |
| 1 | 1 | Sprint 1 — Fundamentos y datos |  | 8d | 2026-10-02 | 2026-10-13 |  | 64h |
| 2 | 2 | Sprint 2 — Modelado |  | 8d | 2026-10-14 | 2026-10-23 |  | 64h |
| 3 | 3 | **Sprint 3 — Evaluación y despliegue** |  | 8d | 2026-10-26 | 2026-11-04 |  | 64h |
| 4 | 1.1 | 1.1 Descarga de Fashionpedia (4.2 GB) y verificación de integridad |  | 2d | 2026-10-02 | 2026-10-05 | Huamantalla Ríos, Diego Miguel | 16h |
| 5 | 1.2 | 1.2 Parseo del JSON de anotaciones con ijson e índice de instancias por imagen |  | 3d | 2026-10-06 | 2026-10-08 | Huamantalla Ríos, Diego Miguel | 24h |
| 6 | 1.3 | 1.3 EDA: distribuciones de categoría y atributo, nulos, taxonomía |  | 3d | 2026-10-09 | 2026-10-13 | Huamantalla Ríos, Diego Miguel | 24h |
| 7 | 1.4 | 1.4 Diseño de GarmentNet, protocolo de entrenamiento y plan de ablación |  | 4d | 2026-10-02 | 2026-10-07 | Latorre Campos, Andre Ismael | 32h |
| 8 | 1.5 | 1.5 Módulo de dataset, memmap uint8 y pipeline de augmentation |  | 4d | 2026-10-08 | 2026-10-13 | Latorre Campos, Andre Ismael | 32h |
| 9 | 1.6 | 1.6 Objetivos de negocio, criterios de éxito, reglas y restricciones duras |  | 4d | 2026-10-02 | 2026-10-07 | Ordoñez Paniura, Marcela Leonor | 32h |
| 10 | 1.7 | 1.7 rules.py v1, léxico de moda ES/EN y vectorizador de gusto (40 dims) |  | 4d | 2026-10-08 | 2026-10-13 | Ordoñez Paniura, Marcela Leonor | 32h |
| 11 | 1.8 | 1.8 Sprint Planning, backlog de producto y wireframes de la app |  | 3d | 2026-10-02 | 2026-10-06 | Suel Monrroy David Joshua | 24h |
| 12 | 1.9 | 1.9 Documentación CRISP-DM fase 1: necesidad, objetivos, alcance y plan |  | 4d | 2026-10-08 | 2026-10-13 | Suel Monrroy David Joshua | 32h |
| 13 | 1.10 | 1.10 Sprint Review y Retrospectiva del Sprint 1 | milestone | 0d | 2026-10-13 | 2026-10-13 | Suel Monrroy David Joshua |  |
| 14 | 2.1 | 2.1 Recorte de 332k prendas con máscaras GT y extracción de color Lab |  | 4d | 2026-10-14 | 2026-10-19 | Huamantalla Ríos, Diego Miguel | 32h |
| 15 | 2.2 | 2.2 Pares de co-ocurrencia y hard negative mining (mismo slot) |  | 2d | 2026-10-21 | 2026-10-22 | Huamantalla Ríos, Diego Miguel | 16h |
| 16 | 2.3 | 2.3 Cache de embeddings y pipeline de inferencia en frío |  | 1d | 2026-10-23 | 2026-10-23 | Huamantalla Ríos, Diego Miguel | 8h |
| 17 | 2.4 | 2.4 QA visual del dataset (grid de muestras) y matriz de trazabilidad |  | 1d | 2026-10-23 | 2026-10-23 | Huamantalla Ríos, Diego Miguel | 8h |
| 18 | 2.5 | 2.5 Smoke test del pipeline y baseline de clase mayoritaria (17,8 %) |  | 1d | 2026-10-14 | 2026-10-14 | Latorre Campos, Andre Ismael | 8h |
| 19 | 2.6 | 2.6 Corrida principal GarmentNet: 30 épocas, bf16, GPU (proceso nocturno) |  | 4d | 2026-10-15 | 2026-10-20 | Latorre Campos, Andre Ismael | 32h |
| 20 | 2.7 | 2.7 Curvas de aprendizaje preliminar y registro de hiperparámetros |  | 1d | 2026-10-21 | 2026-10-21 | Latorre Campos, Andre Ismael | 8h |
| 21 | 2.8 | 2.8 Evaluación CNN: top-1 y macro-F1 por cabeza frente al baseline |  | 2d | 2026-10-22 | 2026-10-23 | Latorre Campos, Andre Ismael | 16h |
| 22 | 2.9 | 2.9 rules.py: paleta armónica, slots y restricciones duras con tests |  | 3d | 2026-10-14 | 2026-10-16 | Ordoñez Paniura, Marcela Leonor | 24h |
| 23 | 2.10 | 2.10 Catálogo de 178k prendas y búsqueda por slot |  | 2d | 2026-10-19 | 2026-10-20 | Ordoñez Paniura, Marcela Leonor | 16h |
| 24 | 2.11 | 2.11 KMeans sobre embeddings y nombre de los 12 estilos |  | 1d | 2026-10-21 | 2026-10-21 | Ordoñez Paniura, Marcela Leonor | 8h |
| 25 | 2.12 | 2.12 Entrenamiento de CompatHead, TasteHead y StyleHead |  | 2d | 2026-10-22 | 2026-10-23 | Ordoñez Paniura, Marcela Leonor | 16h |
| 26 | 2.13 | 2.13 Streamlit: pestañas 1 y 2 (cargar placard, mi gusto) |  | 4d | 2026-10-14 | 2026-10-19 | Suel Monrroy David Joshua | 32h |
| 27 | 2.14 | 2.14 Streamlit: pestaña 3 (recomendar) e integración |  | 2d | 2026-10-21 | 2026-10-22 | Suel Monrroy David Joshua | 16h |
| 28 | 2.15 | 2.15 Documentación CRISP-DM fases 2, 3 y 4 |  | 1d | 2026-10-20 | 2026-10-20 | Suel Monrroy David Joshua | 8h |
| 29 | 2.16 | 2.16 Sprint Review y Retrospectiva del Sprint 2 | milestone | 0d | 2026-10-23 | 2026-10-23 | Suel Monrroy David Joshua |  |
| 30 | 3.1 | 3.1 Segmentación clásica en inferencia: Otsu sobre borde más GrabCut |  | 2d | 2026-10-26 | 2026-10-27 | Huamantalla Ríos, Diego Miguel | 16h |
| 31 | 3.2 | 3.2 Dockerización y guía de despliegue reproducible (CRISP-DM 6) |  | 3d | 2026-10-28 | 2026-10-30 | Huamantalla Ríos, Diego Miguel | 24h |
| 32 | 3.3 | 3.3 Auditoría de integridad del dataset y release del catálogo |  | 2d | 2026-11-02 | 2026-11-03 | Huamantalla Ríos, Diego Miguel | 16h |
| 33 | 3.4 | 3.4 Informe: sección de datos y preprocesamiento |  | 1d | 2026-11-04 | 2026-11-04 | Huamantalla Ríos, Diego Miguel | 8h |
| 34 | 3.5 | 3.5 Corrida A (shallow, control) para ablación de profundidad |  | 2d | 2026-10-26 | 2026-10-27 | Latorre Campos, Andre Ismael | 16h |
| 35 | 3.6 | 3.6 Corrida C (deep), solo si hay tiempo |  | 2d | 2026-10-28 | 2026-10-29 | Latorre Campos, Andre Ismael | 16h |
| 36 | 3.7 | 3.7 Curvas de aprendizaje y tablas de métricas finales de la CNN |  | 2d | 2026-10-30 | 2026-11-02 | Latorre Campos, Andre Ismael | 16h |
| 37 | 3.8 | 3.8 Informe: sección de modelos y resultados de la CNN |  | 1d | 2026-11-03 | 2026-11-03 | Latorre Campos, Andre Ismael | 8h |
| 38 | 3.9 | 3.9 Soporte de integración en la app y preparación de demo técnica |  | 1d | 2026-11-04 | 2026-11-04 | Latorre Campos, Andre Ismael | 8h |
| 39 | 3.10 | 3.10 Beam search e integración Taste, Compat y reglas duras |  | 2d | 2026-10-26 | 2026-10-27 | Ordoñez Paniura, Marcela Leonor | 16h |
| 40 | 3.11 | 3.11 Evaluación comparativa: MLP frente a conteo-PMI y frente a rules.py |  | 2d | 2026-10-28 | 2026-10-29 | Ordoñez Paniura, Marcela Leonor | 16h |
| 41 | 3.12 | 3.12 Ablación taste on/off y AUC en hard negatives |  | 2d | 2026-10-30 | 2026-11-02 | Ordoñez Paniura, Marcela Leonor | 16h |
| 42 | 3.13 | 3.13 Análisis estadístico (Wilcoxon) y tabular de resultados |  | 2d | 2026-11-03 | 2026-11-04 | Ordoñez Paniura, Marcela Leonor | 16h |
| 43 | 3.14 | 3.14 Streamlit: pestaña 4 (links de compra) y pestaña 5 (feedback y métricas) |  | 3d | 2026-10-26 | 2026-10-28 | Suel Monrroy David Joshua | 24h |
| 44 | 3.15 | 3.15 User study de 3 brazos: coordinación y tabulación (participan los 4) |  | 2d | 2026-10-29 | 2026-10-30 | Suel Monrroy David Joshua | 16h |
| 45 | 3.16 | 3.16 Informe: introducción, antecedentes, marco teórico y gestión |  | 2d | 2026-11-02 | 2026-11-03 | Suel Monrroy David Joshua | 16h |
| 46 | 3.17 | 3.17 Demo de entrega, Sprint Review final y Retrospectiva | milestone | 0d | 2026-11-04 | 2026-11-04 | Suel Monrroy David Joshua |  |

Notes:
- 1: Objetivo: entender el negocio, conseguir y preparar el dataset, y dejar fijado el diseño de la red antes de entrenar nada. / Fases: CRISP-DM fases 1, 2 y 3
- 2: Objetivo: entrenar GarmentNet desde cero sobre 332k prendas y obtener los tres MLP que rankean combinaciones. / Fases: CRISP-DM fase 4
- 3: Objetivo: comparar contra baselines, medir la personalización, desplegar la app y documentar la entrega. / Fases: CRISP-DM fases 5 y 6
- 13: Ceremonia Scrum
- 29: Ceremonia Scrum
- 46: Ceremonia Scrum
